# Sistema de Control de Nivel de Líquido en Tanques

Schedule from MS Project, 2011-09-14 to 2012-06-04, costs in $.
Gobant

## Calendars

- Standard: Mon-Fri 08:00-12:00, 13:00-17:00; Sat-Sun off.

## Resources

| Resource | Rate |
| --- | --- |
| Pablo D. Roca | 1 |
| Ezequiel Di Donato | 1 |
| Emmanuel Espina |  |

## Schedule

| ID | WBS | Task | Duration | Start | Finish | Predecessors | Total slack | Free slack | Resources | Work | Cost |
| --- | --- | --- | --- | --- | --- | --- | --- | --- | --- | --- | --- |
| 1 | 1 | Planificacion | 1d? | 2011-09-14 | 2011-09-19 |  | 10d | 1d | Pablo D. Roca; Ezequiel Di Donato | 16h | 16 |
| 2 | 2 | **Documentación** | 42d? | 2011-09-20 | 2011-11-17 | 1 | 10d | 0d |  | 166h | 166 |
| 3 | 2.1 | Análisis | 1.88d? | 2011-09-20 | 2011-09-29 |  | 10d | 0d | Pablo D. Roca; Ezequiel Di Donato | 30h | 30 |
| 4 | 2.2 | Revisión análisis | 5d | 2011-11-03 | 2011-11-10 | 3 | 15d |  | Pablo D. Roca; Ezequiel Di Donato | 20h | 20 |
| 5 | 2.3 | Diseño | 2.5d? | 2011-09-29 | 2011-10-13 | 3 | 10d | 0d | Pablo D. Roca; Ezequiel Di Donato | 40h | 40 |
| 6 | 2.4 | Revisión Diseño | 5d | 2011-11-10 | 2011-11-17 | 5 | 10d |  | Pablo D. Roca; Ezequiel Di Donato | 18h | 18 |
| 7 | 2.5 | Diseño Detallado | 2.5d? | 2011-10-13 | 2011-10-27 | 5 | 20d | 0d | Pablo D. Roca; Ezequiel Di Donato | 40h | 40 |
| 8 | 2.6 | Revisión Diseño Detallado | 5d | 2011-10-27 | 2011-11-03 | 7 | 20d |  | Pablo D. Roca; Ezequiel Di Donato | 18h | 18 |
| 9 | 3 | **Configuración de Infraestructura (hardware)** | 30d? | 2011-11-17 | 2011-12-29 | 2 | 0d |  |  | 110h | 98.67 |
| 10 | 3.1 | Conexionado Inicial y Pruebas Preliminares | 2.5d? | 2011-11-17 | 2011-11-30 |  | 13d |  | Ezequiel Di Donato | 20h | 20 |
| 11 | 3.2 | Pruebas de Adquisición de Datos desde Placa RIAC | 2.5d? | 2011-11-17 | 2011-11-30 |  | 13d |  | Pablo D. Roca | 20h | 20 |
| 12 | 3.3 | Pruebas de Control del Actuador desde Matlab | 3.25d? | 2011-12-01 | 2011-12-19 |  | 0d |  | Ezequiel Di Donato | 26h | 26 |
| 13 | 3.4 | Pruebas de Lectura de Configuración desde Código Matlab | 1.25d? | 2011-12-01 | 2011-12-07 |  | 8d |  | Pablo D. Roca | 10h | 10 |
| 14 | 3.5 | Definición de Interface Contra Set de Control ABB | 3.67d? | 2011-12-20 | 2011-12-29 | 10, 11, 12, 13 | 0d |  | Pablo D. Roca [50%]; Ezequiel Di Donato [50%]; Emmanuel Espina [50%] | 22h | 14.67 |
| 15 | 3.6 | Definición de Interface Contra Sensor Siemens | 2d? | 2011-12-20 | 2011-12-23 | 10, 11, 12, 13 | 4d |  | Pablo D. Roca [50%]; Ezequiel Di Donato [50%]; Emmanuel Espina [50%] | 12h | 8 |
| 16 | 4 | **Implementación de Interfaces Set de Cotrol ABB y Sensor Siemens** | 21.25d? | 2011-12-30 | 2012-01-30 | 9 | 25.75d |  |  | 170h |  |
| 17 | 4.1 | Desarrollo Interface Contra Set de Control ABB | 10.62d? | 2011-12-30 | 2012-01-13 |  | 36.38d |  | Emmanuel Espina | 85h |  |
| 18 | 4.2 | Desarrollo Interface Contra Sensor Siemens | 10.62d? | 2012-01-13 | 2012-01-30 |  | 25.75d |  | Emmanuel Espina | 85h |  |
| 19 | 5 | **Desarrollo de Software (excluyendo comunicación con Set de Control ABB y Sensor Siemens)** | 47d? | 2011-12-29 | 2012-03-05 | 9 | 0d |  |  | 170h | 170 |
| 20 | 5.1 | CU 1 Instalar la Estación de Control | 1.5d? | 2012-02-09 | 2012-02-17 |  | 11d |  | Ezequiel Di Donato; Pablo D. Roca | 16h | 16 |
| 21 | 5.2 | CU 2 Configurar Parámetros Avanzados | 1.25d? | 2012-02-17 | 2012-02-24 |  | 6d |  | Pablo D. Roca | 10h | 10 |
| 22 | 5.3 | CU 3 Conectarse al Set de Control Elegido | 2.5d? | 2011-12-29 | 2012-01-12 |  | 34d | 0d | Ezequiel Di Donato | 20h | 20 |
| 23 | 5.4 | CU 4 Desconectarse del Set de Control | 0.75d? | 2012-01-12 | 2012-01-17 | 22 | 34d |  | Ezequiel Di Donato | 6h | 6 |
| 24 | 5.5 | CU 5 Ampliar la Gráfica del Proceso | 2.5d? | 2012-01-17 | 2012-01-31 |  | 24d |  | Ezequiel Di Donato | 20h | 20 |
| 25 | 5.6 | CU 6 Modificar Párametro de Control | 2.5d? | 2012-01-30 | 2012-02-13 |  | 15d |  | Pablo D. Roca | 20h | 20 |
| 26 | 5.7 | CU 7 Guardar Configuración de Control Automático | 1d? | 2012-02-15 | 2012-02-21 |  | 9d |  | Ezequiel Di Donato | 8h | 8 |
| 27 | 5.8 | CU 8 Iniciar Grabación del Proceso | 3.25d? | 2011-12-29 | 2012-01-17 |  | 0d |  | Pablo D. Roca | 26h | 26 |
| 28 | 5.9 | CU 9 Finalizar Grabación del Proceso | 2.25d? | 2012-01-17 | 2012-01-30 | 27 | 25d |  | Pablo D. Roca | 18h | 18 |
| 29 | 5.10 | CU 10 Agregar Comentario Durante la Grabación del Proceso | 1.5d? | 2012-02-24 | 2012-03-05 | 27 | 0d |  | Pablo D. Roca | 12h | 12 |
| 30 | 5.11 | CU 11 Cargar Proceso Grabado | 1.75d? | 2012-01-31 | 2012-02-09 |  | 17d |  | Ezequiel Di Donato | 14h | 14 |

| ID | WBS | Task | Duration | Start | Finish | Predecessors | Total slack | Resources | Work | Cost |
| --- | --- | --- | --- | --- | --- | --- | --- | --- | --- | --- |
| 31 | 6 | **Integración Implementaciones Set de Control ABB y Sensor Siemens** | 31d? | 2012-03-05 | 2012-04-17 | 16, 19 | 0d |  | 126h | 63 |
| 32 | 6.1 | Integración CU 1 Instalar la Estación de Control | 1.12d? | 2012-03-05 | 2012-03-07 |  | 0d | Ezequiel Di Donato; Emmanuel Espina | 9h | 4.5 |
| 33 | 6.2 | Integración CU 2 Configurar Parámetros Avanzados | 1.12d? | 2012-03-07 | 2012-03-09 | 32 | 0d | Pablo D. Roca; Emmanuel Espina | 9h | 4.5 |
| 34 | 6.3 | Integración CU 3 Conectarse al Set de Control Elegido | 2.25d? | 2012-03-09 | 2012-03-16 | 33 | 0d | Ezequiel Di Donato; Emmanuel Espina | 18h | 9 |
| 35 | 6.4 | Integración CU 4 Desconectarse del Set de Control | 2.25d? | 2012-03-16 | 2012-03-22 | 34 | 0d | Pablo D. Roca; Emmanuel Espina | 18h | 9 |
| 36 | 6.5 | Integración CU 5 Ampliar la Gráfica del Proceso | 1.12d? | 2012-03-22 | 2012-03-27 | 35 | 0d | Ezequiel Di Donato; Emmanuel Espina | 9h | 4.5 |
| 37 | 6.6 | Integración CU 6 Modificar Párametro de Control | 2.25d? | 2012-03-27 | 2012-04-02 | 36 | 0d | Pablo D. Roca; Emmanuel Espina | 18h | 9 |
| 38 | 6.7 | Integración CU 7 Guardar Configuración de Control Automático | 1.12d? | 2012-04-02 | 2012-04-04 | 37 | 0d | Ezequiel Di Donato; Emmanuel Espina | 9h | 4.5 |
| 39 | 6.8 | Integración CU 8 Iniciar Grabación del Proceso | 1.12d? | 2012-04-04 | 2012-04-09 | 38 | 0d | Pablo D. Roca; Emmanuel Espina | 9h | 4.5 |
| 40 | 6.9 | Integración CU 9 Finalizar Grabación del Proceso | 1.12d? | 2012-04-09 | 2012-04-11 | 39 | 0d | Ezequiel Di Donato; Emmanuel Espina | 9h | 4.5 |
| 41 | 6.10 | Integración CU 10 Agregar Comentario Durante la Grabación del Proceso | 1.12d? | 2012-04-11 | 2012-04-13 | 40 | 0d | Pablo D. Roca; Emmanuel Espina | 9h | 4.5 |
| 42 | 6.11 | Integración CU 11 Cargar Proceso Grabado | 1.12d? | 2012-04-13 | 2012-04-17 | 41 | 0d | Ezequiel Di Donato; Emmanuel Espina | 9h | 4.5 |
| 43 | 7 | **Prueba del Software Sistema (excepto Set de Control ABB y Sensor Siemens)** | 15d? | 2012-04-17 | 2012-05-08 | 31 | 0d |  | 60h | 60 |
| 44 | 7.1 | Pruebas de Casos de Test | 2.5d? | 2012-04-17 | 2012-05-01 |  | 0d | Pablo D. Roca; Ezequiel Di Donato | 40h | 40 |
| 45 | 7.2 | Pruebas de Aceptación Internas | 1.25d? | 2012-05-01 | 2012-05-08 | 44 | 0d | Pablo D. Roca; Ezequiel Di Donato | 20h | 20 |
| 46 | 8 | **Prueba del Software Sistema Completo** | 14d? | 2012-05-08 | 2012-05-28 | 19, 31 | 0d |  | 85h | 56.67 |
| 47 | 8.1 | Pruebas de Casos de Test | 4.17d? | 2012-05-08 | 2012-05-21 | 45 | 0d | Pablo D. Roca; Ezequiel Di Donato; Emmanuel Espina | 50h | 33.33 |
| 48 | 8.2 | Pruebas de Aceptación Internas sobre Producto Completo | 2.92d? | 2012-05-21 | 2012-05-28 | 47 | 0d | Pablo D. Roca; Ezequiel Di Donato; Emmanuel Espina | 35h | 23.33 |
| 49 | 9 | **Presentación y Entrega Final del Producto** | 4d? | 2012-05-29 | 2012-06-04 | 46, 43 | 0d |  | 20h | 20 |
| 50 | 9.1 | Redacción de manuales | 0.62d? | 2012-05-29 | 2012-05-31 |  | 0d | Pablo D. Roca; Ezequiel Di Donato | 10h | 10 |
| 51 | 9.2 | Presentación | 0.62d? | 2012-05-31 | 2012-06-04 | 50 | 0d | Pablo D. Roca; Ezequiel Di Donato | 10h | 10 |
